# Cronograma_VR_Bateria.xml

Schedule from MS Project XML, 2026-09-07 to 2026-10-21.

## Calendars

- Diana — Director de proyecto: Mon-Fri 08:00-12:00, 13:00-17:00; Sat-Sun off. Exceptions (off unless hours are given): 2026-09-16 to 2026-09-27.

## Resources

| Resource | Group | Rate | Notes |
| --- | --- | --- | --- |
| No Asignado |  |  |  |
| Benjamín — Desarrollador de gameplay | Juego de ritmo | 59.07 | 1.5 salarios mínimos por hora. Tarifa base: $39.38/h. |
| Kimberly — Artista y modelador 3D | Entorno 3D y assets | 51.19 | 1.3 salarios mínimos por hora. Tarifa base: $39.38/h. |
| Sarai — Diseñador de interacción UX-XR | Interfaz / UX/UI | 51.19 | 1.3 salarios mínimos por hora. Tarifa base: $39.38/h. |
| Misael — Desarrollador de realidad virtual | Desarrollo VR y batería | 59.07 | 1.5 salarios mínimos por hora. Tarifa base: $39.38/h. |
| María — Analista e investigador | Experiencia emocional | 51.19 | 1.3 salarios mínimos por hora. Tarifa base: $39.38/h. |
| Javier — Compositor y diseñador musical | Música | 47.26 | 1.2 salarios mínimos por hora. Tarifa base: $39.38/h. |
| Christian — Diseñador de audio | Sonido | 47.26 | 1.2 salarios mínimos por hora. Tarifa base: $39.38/h. |
| Diana — Gerente de proyecto | QA, documentación y gestión | 70.88 | 1.8 salarios mínimos por hora. Tarifa base: $39.38/h. |
| Diana — Analista e investigador | QA, documentación y gestión | 51.19 | 1.3 salarios mínimos por hora. Tarifa base: $39.38/h. |
| Diana — Analista de pruebas (QA) | QA, documentación y gestión | 43.32 | 1.1 salarios mínimos por hora. Tarifa base: $39.38/h. |
| Diana — Redactor técnico | QA, documentación y gestión | 39.38 | 1.0 salarios mínimos por hora. Tarifa base: $39.38/h. |
| Diana — Desarrollador de realidad virtual | QA, documentación y gestión | 59.07 | 1.5 salarios mínimos por hora. Tarifa base: $39.38/h. |
| Diana — Director de proyecto | QA, documentación y gestión | 86.64 | 2.2 salarios mínimos por hora. Tarifa base: $39.38/h. |

## Schedule

| ID | WBS | Task | Duration | Start | Finish | Predecessors | Complete | Constraint | Resources |
| --- | --- | --- | --- | --- | --- | --- | --- | --- | --- |
| 1 | 1 | **D. Desarrollo VR y batería** | 7.88d | 2026-09-07 | 2026-09-22 |  | 92% |  |  |
| 2 | 1.1 | DP.1 — Crear el proyecto base en Unity y definir la versión que utilizará todo el equipo | 0.38d | 2026-09-07 | 2026-09-07 |  | 100% |  | Misael — Desarrollador de realidad virtual |
| 3 | 1.2 | DP.2 — Configurar repositorio y estructura inicial de carpetas del proyecto | 0.38d | 2026-09-07 | 2026-09-07 | 2 | 100% |  | Misael — Desarrollador de realidad virtual |
| 4 | 1.3 | DP.3 — Configurar control de versiones y reglas para evitar conflictos entre desarrolladores | 0.62d | 2026-09-07 | 2026-09-08 | 3 | 100% |  | Misael — Desarrollador de realidad virtual |
| 5 | 1.4 | DX.1 — Instalar y configurar paquetes XR necesarios para realidad virtual | 0.62d | 2026-09-07 | 2026-09-07 | 2 | 100% |  | Misael — Desarrollador de realidad virtual |
| 6 | 1.5 | DX.2 — Configurar OpenXR y compatibilidad con el visor VR seleccionado | 0.62d | 2026-09-08 | 2026-09-08 | 5 | 100% |  | Misael — Desarrollador de realidad virtual |
| 7 | 1.6 | DX.3 — Crear escena técnica inicial para realizar pruebas de VR | 0.38d | 2026-09-08 | 2026-09-08 | 6 | 100% |  | Misael — Desarrollador de realidad virtual |
| 8 | 1.7 | DX.4 — Configurar XR Origin, cámara y seguimiento de cabeza | 0.5d | 2026-09-09 | 2026-09-09 | 7 | 100% |  | Misael — Desarrollador de realidad virtual |
| 9 | 1.8 | DX.5 — Configurar seguimiento de los controles derecho e izquierdo | 0.5d | 2026-09-09 | 2026-09-09 | 8 | 100% | start no later than 2026-09-09 | Misael — Desarrollador de realidad virtual |
| 10 | 1.9 | DX.6 — Comprobar escala, altura y posición del jugador dentro del entorno VR | 0.5d | 2026-09-09 | 2026-09-09 | 8 | 100% | start no later than 2026-09-09 | Misael — Desarrollador de realidad virtual |
| 11 | 1.11 | DB.1 — Crear versión provisional de las baquetas para pruebas | 0.38d | 2026-09-09 | 2026-09-09 | 7 | 100% |  | Misael — Desarrollador de realidad virtual |
| 12 | 1.13 | DB.3 — Ajustar posición de agarre de cada baqueta en los controles VR | 0.75d | 2026-09-11 | 2026-09-14 | 9, 11 | 100% |  | Misael — Desarrollador de realidad virtual |
| 13 | 1.14 | DT.1 — Crear batería provisional con objetos simples para comenzar pruebas | 0.62d | 2026-09-09 | 2026-09-09 | 7 | 100% |  | Misael — Desarrollador de realidad virtual |
| 14 | 1.15 | DT.2 — Definir todos los componentes interactivos de la batería: snare, kick, toms, hi-hat, crash y ride | 0.75d | 2026-09-09 | 2026-09-10 | 13 | 100% |  | Misael — Desarrollador de realidad virtual |
| 15 | 1.17 | DG.1 — Crear sistema general de detección de golpe entre baqueta y batería | 1d | 2026-09-11 | 2026-09-14 | 9, 11, 14 | 100% |  | Misael — Desarrollador de realidad virtual |
| 16 | 1.18 | DG.2 — Identificar automáticamente qué pieza de la batería fue golpeada | 1d | 2026-09-14 | 2026-09-15 | 15 | 100% |  | Misael — Desarrollador de realidad virtual |
| 17 | 1.19 | DG.3 — Detectar velocidad de movimiento de la baqueta antes del impacto | 1d | 2026-09-14 | 2026-09-15 | 15 | 100% |  | Misael — Desarrollador de realidad virtual |
| 18 | 1.20 | DG.4 — Convertir la velocidad de la baqueta en un valor de intensidad de golpe | 1d | 2026-09-15 | 2026-09-16 | 17 | 100% |  | Misael — Desarrollador de realidad virtual |
| 19 | 1.21 | DG.5 — Establecer niveles de intensidad suave, media y fuerte | 0.75d | 2026-09-16 | 2026-09-17 | 18 | 100% |  | Misael — Desarrollador de realidad virtual |
| 20 | 1.22 | DG.6 — Implementar sistema para evitar golpes duplicados provocados por una misma colisión | 1d | 2026-09-14 | 2026-09-15 | 15 | 100% |  | Misael — Desarrollador de realidad virtual |
| 21 | 1.23 | DH.1 — Configurar vibración háptica del controlador al golpear la batería | 0.75d | 2026-09-14 | 2026-09-15 | 15 | 100% |  | Misael — Desarrollador de realidad virtual |
| 22 | 1.24 | DH.2 — Ajustar la intensidad háptica de acuerdo con la fuerza del golpe | 0.75d | 2026-09-16 | 2026-09-17 | 18, 21 | 100% |  | Misael — Desarrollador de realidad virtual |
| 23 | 1.25 | DG.7 — Crear evento general DrumHit que informe instrumento, intensidad y tiempo del golpe | 1d | 2026-09-16 | 2026-09-17 | 16, 18 | 100% |  | Misael — Desarrollador de realidad virtual |
| 24 | 1.26 | DG.8 — Implementar soporte independiente para golpe con baqueta izquierda y derecha | 0.75d | 2026-09-17 | 2026-09-18 | 23 | 100% |  | Misael — Desarrollador de realidad virtual |
| 25 | 1.28 | DG.9 — Ajustar sensibilidad de las colisiones de batería | 1d | 2026-09-15 | 2026-09-16 | 15 | 100% |  | Misael — Desarrollador de realidad virtual |
| 26 | 1.29 | DT.4 — Incorporar modelo 3D definitivo de la batería | 0.75d | 2026-09-16 | 2026-09-17 | 57, 56, 58, 25 |  |  | Misael — Desarrollador de realidad virtual |
| 27 | 1.30 | DT.5 — Reconfigurar colliders utilizando el modelo definitivo | 0.38d | 2026-09-07 | 2026-09-07 | 26 |  |  | Misael — Desarrollador de realidad virtual |
| 28 | 1.31 | DT.6 — Ajustar posición y dimensiones de batería para una postura cómoda en VR | 0.62d | 2026-09-14 | 2026-09-14 | 27, 62 | 100% |  | Misael — Desarrollador de realidad virtual |
| 29 | 1.32 | DR.1 — Realizar primera prueba completa de interacción física de la batería | 1.12d | 2026-09-18 | 2026-09-21 | 28, 4, 10, 12, 20, 22, 24, 57, 56, 58 | 100% |  | Misael — Desarrollador de realidad virtual |
| 30 | 1.33 | DR.2 — Corregir errores detectados durante la primera prueba de batería | 1.12d | 2026-09-21 | 2026-09-22 | 29 | 100% |  | Misael — Desarrollador de realidad virtual |
| 31 | 1.30 | DM.1 — Exportar las métricas de sesión: precisión temporal y constancia | 0.5d | 2026-09-22 | 2026-09-22 | 30 | 100% |  |  |

Notes:
- 31: [AÑADIDA POR EL RECORTE] Cierra la medida de éxito 9. El marcador ya calculaba precisión y constancia; faltaba volcarlas a un archivo.

| ID | WBS | Task | Type | Duration | Start | Finish | Predecessors | Complete | Constraint | Resources |
| --- | --- | --- | --- | --- | --- | --- | --- | --- | --- | --- |
| 32 | 2 | **J. Juego de ritmo** |  | 9.38d | 2026-09-07 | 2026-10-02 |  | 100% |  |  |
| 33 | 2.1 | JA.1 — Definir técnicamente cómo funcionará el juego de ritmo |  | 1d | 2026-09-07 | 2026-09-07 |  | 100% |  | Benjamín — Desarrollador de gameplay |
| 34 | 2.2 | JA.2 — Definir los datos necesarios para representar una nota musical dentro del juego |  | 0.38d | 2026-09-08 | 2026-09-08 | 33 | 100% |  | Benjamín — Desarrollador de gameplay |
| 35 | 2.3 | JA.3 — Diseñar estructura de datos para canciones y beatmaps |  | 1d | 2026-09-08 | 2026-09-09 | 34 | 100% |  | Benjamín — Desarrollador de gameplay |
| 36 | 2.4 | JT.1 — Crear sistema de reloj musical independiente de los FPS |  | 1d | 2026-09-08 | 2026-09-08 | 33 | 100% |  | Benjamín — Desarrollador de gameplay |
| 37 | 2.5 | JT.2 — Implementar cálculo de BPM y duración de cada beat |  | 0.38d | 2026-09-09 | 2026-09-09 | 36 | 100% |  | Benjamín — Desarrollador de gameplay |
| 38 | 2.6 | JT.3 — Implementar cálculo de compases y subdivisiones rítmicas |  | 1d | 2026-09-09 | 2026-09-10 | 37 | 100% |  | Benjamín — Desarrollador de gameplay |
| 39 | 2.8 | JB.1 — Crear prototipo de beatmap manual | milestone | 0.62d | 2026-09-09 | 2026-09-09 | 35 | 100% |  | Benjamín — Desarrollador de gameplay |
| 40 | 2.9 | JB.2 — Crear sistema que cargue un beatmap | milestone | 0d | 2026-09-09 | 2026-09-09 | 35 | 100% |  | Benjamín — Desarrollador de gameplay |
| 41 | 2.10 | JB.3 — Sincronizar beatmap con reproducción de música |  | 0.75d | 2026-09-09 | 2026-09-10 | 36, 40, 39 | 100% |  | Benjamín — Desarrollador de gameplay |
| 42 | 2.11 | JN.1 — Crear representación visual provisional de las notas |  | 0.25d | 2026-09-10 | 2026-09-10 | 41 | 100% |  | Benjamín — Desarrollador de gameplay |
| 43 | 2.12 | JN.2 — Crear sistema que indique qué componente de la batería debe golpearse |  | 0.5d | 2026-09-10 | 2026-09-11 | 42 | 100% |  | Benjamín — Desarrollador de gameplay |
| 44 | 2.13 | JW.1 — Definir ventanas temporales Perfect, Good y Miss |  | 0.25d | 2026-09-10 | 2026-09-10 | 41 | 100% |  | Benjamín — Desarrollador de gameplay |
| 45 | 2.14 | JW.2 — Programar detección de golpes correctos |  | 0.5d | 2026-09-10 | 2026-09-11 | 44, 34 | 100% |  | Benjamín — Desarrollador de gameplay |
| 46 | 2.17 | JW.5 — Programar detección de notas no golpeadas |  | 0d | 2026-09-11 | 2026-09-11 | 45 | 100% |  | Benjamín — Desarrollador de gameplay |
| 47 | 2.18 | JP.1 — Crear sistema básico de puntuación |  | 0.5d | 2026-09-11 | 2026-09-14 | 45, 46 | 100% |  | Benjamín — Desarrollador de gameplay |
| 48 | 2.20 | JP.3 — Crear cálculo de precisión porcentual del usuario |  | 0d | 2026-09-14 | 2026-09-14 | 47 | 100% |  | Benjamín — Desarrollador de gameplay |
| 49 | 2.22 | JI.1 — Integrar evento DrumHit de la batería VR con el juego de ritmo |  | 0.75d | 2026-09-17 | 2026-09-18 | 23, 45 | 100% |  | Benjamín — Desarrollador de gameplay |
| 50 | 3 | **E. Experiencia emocional** |  | 10d | 2026-09-07 | 2026-09-18 |  | 96% |  |  |
| 51 | 3.1 | EO.1 — Definir objetivo general de la experiencia emocional |  | 0.5d | 2026-09-07 | 2026-09-07 |  | 100% |  | María — Analista e investigador |
| 52 | 3.2 | EO.2 — Definir alcance y límites del proyecto respecto al concepto de terapia |  | 0.5d | 2026-09-07 | 2026-09-07 | 51 | 100% | start no later than 2026-09-07 | María — Analista e investigador |
| 53 | 3.3 | EB.1 — Buscar bibliografía científica sobre música y regulación emocional |  | 2d | 2026-09-07 | 2026-09-08 |  | 100% |  | María — Analista e investigador |
| 54 | 3.4 | EB.2 — Buscar bibliografía científica sobre percusión y expresión emocional |  | 2d | 2026-09-07 | 2026-09-08 |  | 100% |  | María — Analista e investigador |
| 55 | 3.5 | EB.3 — Buscar investigaciones sobre juegos de ritmo relacionados con bienestar y expresión emocional |  | 1d | 2026-09-07 | 2026-09-07 |  | 100% |  | María — Analista e investigador |
| 56 | 3.6 | EB.4 — Seleccionar estudios científicos que realmente sustentarán el proyecto |  | 1d | 2026-09-09 | 2026-09-09 | 53, 54, 55 | 100% |  | María — Analista e investigador |
| 57 | 3.7 | EB.5 — Crear matriz bibliográfica de artículos, objetivo, metodología y resultados |  | 2d | 2026-09-10 | 2026-09-11 | 56 | 100% |  | María — Analista e investigador |
| 58 | 3.8 | EE.1 — Definir qué emociones serán abordadas dentro de la simulación |  | 1d | 2026-09-10 | 2026-09-10 | 56 | 100% |  | María — Analista e investigador |
| 59 | 3.9 | EE.2 — Definir qué actividades se relacionarán con cada emoción |  | 1d | 2026-09-11 | 2026-09-11 | 58 | 100% |  | María — Analista e investigador |
| 60 | 3.10 | EE.3 — Determinar duración aproximada de una sesión |  | 0.38d | 2026-09-14 | 2026-09-14 | 59 | 100% |  | María — Analista e investigador |
| 61 | 3.11 | ER — Investigar postura, comodidad y ergonomía durante actividades de percusión VR |  | 1d | 2026-09-10 | 2026-09-10 | 56 | 100% |  | María — Analista e investigador |
| 62 | 3.12 | EG.1 — Redactar el guion de introducción general de la terapia |  | 1d | 2026-09-11 | 2026-09-11 | 52, 58 | 100% |  | María — Analista e investigador |
| 63 | 3.13 | EG.2 — Redactar las instrucciones específicas de la actividad terapéutica |  | 1d | 2026-09-14 | 2026-09-14 | 59, 62 | 100% |  | María — Analista e investigador |
| 64 | 3.14 | EF — Diseñar flujo completo de experiencia desde ingreso hasta finalización |  | 2d | 2026-09-15 | 2026-09-16 | 59, 62, 63, 60 | 100% |  | María — Analista e investigador |
| 65 | 3.15 | EG.3 — Redactar el guion del tutorial introductorio |  | 1d | 2026-09-17 | 2026-09-17 | 63, 64 | 100% |  | María — Analista e investigador |
| 66 | 3.16 | EI — Definir cómo se utilizarán el ritmo y la intensidad de los golpes para expresar las emociones seleccionadas |  | 1d | 2026-09-14 | 2026-09-14 | 58, 59 | 100% |  | María — Analista e investigador |
| 67 | 3.17 | EG.4 — Redactar el guion de cierre de la experiencia terapéutica |  | 0.38d | 2026-09-17 | 2026-09-17 | 64 | 100% |  | María — Analista e investigador |
| 68 | 3.18 | ET.1 — Redactar la fundamentación teórica de la propuesta terapéutica |  | 3d | 2026-09-15 | 2026-09-17 | 57, 66 | 100% |  | María — Analista e investigador |
| 69 | 3.19 | ET.2 — Revisar y actualizar la fundamentación según el funcionamiento final del prototipo |  | 1d | 2026-09-18 | 2026-09-18 | 68, 140 |  |  | María — Analista e investigador |

| ID | WBS | Task | Duration | Start | Finish | Predecessors | Complete | Constraint | Resources |
| --- | --- | --- | --- | --- | --- | --- | --- | --- | --- |
| 70 | 4 | **M. Música** | 9.62d | 2026-09-07 | 2026-10-09 |  | 100% |  |  |
| 71 | 4.6 | ML.1 — Determinar si se utilizará música original, libre de derechos o licenciada | 0.5d | 2026-09-07 | 2026-09-07 |  | 100% |  | Javier — Compositor y diseñador musical |
| 72 | 4.7 | ML.2 — Investigar licencias de las pistas o recursos musicales considerados | 1d | 2026-09-07 | 2026-09-08 | 71 | 100% | start no later than 2026-09-07 | Javier — Compositor y diseñador musical |
| 73 | 4.8 | MP.1 — Crear o seleccionar primera pista musical de prueba | 2d | 2026-09-14 | 2026-09-15 | 57, 71, 61 | 100% |  | Javier — Compositor y diseñador musical |
| 74 | 4.9 | MP.2 — Determinar BPM exacto de la primera pista | 0d | 2026-09-15 | 2026-09-15 | 73 | 100% |  | Javier — Compositor y diseñador musical |
| 75 | 4.10 | MP.3 — Identificar estructura musical de la primera pista | 0d | 2026-09-15 | 2026-09-15 | 73 | 100% |  | Javier — Compositor y diseñador musical |
| 76 | 4.11 | MB.1 — Crear patrón básico de batería para la primera pista | 1.38d | 2026-09-16 | 2026-09-17 | 75 | 100% |  | Javier — Compositor y diseñador musical |
| 77 | 4.14 | MB.4 — Convertir patrón rítmico en información utilizable para el beatmap | 0.62d | 2026-09-17 | 2026-09-18 | 76, 74 | 100% | start no later than 2026-09-28 | Javier — Compositor y diseñador musical |
| 78 | 5 | **S. Sonido** | 10.38d | 2026-09-07 | 2026-09-21 |  | 100% |  |  |
| 79 | 5.1 | SP.1 — Crear lista de todos los sonidos necesarios para el proyecto | 0.38d | 2026-09-07 | 2026-09-07 |  | 100% |  | Christian — Diseñador de audio |
| 80 | 5.3 | SB.1 — Buscar sonido de kick | 0d | 2026-09-07 | 2026-09-07 | 79 | 100% |  | Christian — Diseñador de audio |
| 81 | 5.4 | SB.2 — Buscar sonido de snare | 0d | 2026-09-07 | 2026-09-07 | 79 | 100% |  | Christian — Diseñador de audio |
| 82 | 5.5 | SB.3 — Buscar sonidos de toms | 0d | 2026-09-07 | 2026-09-07 | 79 | 100% |  | Christian — Diseñador de audio |
| 83 | 5.6 | SB.4 — Buscar sonidos de hi-hat abierto y cerrado | 0d | 2026-09-07 | 2026-09-07 | 79 | 100% |  | Christian — Diseñador de audio |
| 84 | 5.7 | SB.5 — Buscar sonidos de crash y ride | 0d | 2026-09-07 | 2026-09-07 | 79 | 100% |  | Christian — Diseñador de audio |
| 85 | 5.8 | SB.6 — Seleccionar tres niveles de intensidad para cada componente principal | 2.75d | 2026-09-08 | 2026-09-11 | 80, 81, 82, 83, 84 | 100% |  | Christian — Diseñador de audio |
| 86 | 5.9 | SE.1 — Editar inicio y final de cada muestra para evitar retrasos | 1.25d | 2026-09-11 | 2026-09-14 | 85 | 100% |  | Christian — Diseñador de audio |
| 87 | 5.11 | SE.3 — Normalizar volumen de las muestras de batería | 1d | 2026-09-14 | 2026-09-15 | 86 | 100% |  | Christian — Diseñador de audio |
| 88 | 5.12 | SE.4 — Exportar sonidos en formato apropiado para Unity | 0d | 2026-09-15 | 2026-09-15 | 87, 85 | 100% |  | Christian — Diseñador de audio |
| 89 | 5.15 | SI.1 — Integrar sonidos de batería con sistema DrumHit | 0.75d | 2026-09-17 | 2026-09-18 | 23, 88 | 100% |  | Christian — Diseñador de audio |
| 90 | 5.16 | SI.2 — Asignar sonidos diferentes según intensidad del golpe | 1d | 2026-09-18 | 2026-09-21 | 19, 89 | 100% |  | Christian — Diseñador de audio |
| 91 | 5.17 | SI.3 — Configurar volumen espacial de la batería dentro del entorno VR | 1d | 2026-09-18 | 2026-09-21 | 89 | 100% |  | Christian — Diseñador de audio |
| 92 | 5.18 | SI.4 — Medir retraso perceptible entre impacto y reproducción del sonido | 1d | 2026-09-18 | 2026-09-21 | 89 | 100% |  | Christian — Diseñador de audio |
| 93 | 6 | **I. Interfaz / UX/UI** | 7.62d | 2026-09-10 | 2026-09-24 |  | 55% |  |  |
| 94 | 6.1 | IM.1 — Definir mapa completo de pantallas de la aplicación | 1d | 2026-09-17 | 2026-09-18 | 66, 67 | 100% |  | Sarai — Diseñador de interacción UX-XR |
| 95 | 6.2 | IM.2 — Definir navegación entre menú, experiencia guiada, juego y modo libre | 0.75d | 2026-09-18 | 2026-09-18 | 94 | 100% |  | Sarai — Diseñador de interacción UX-XR |
| 96 | 6.3 | IW.1 — Crear wireframe del menú principal | 0.75d | 2026-09-18 | 2026-09-21 | 95 | 100% |  | Sarai — Diseñador de interacción UX-XR |
| 97 | 6.4 | IW.2 — Crear wireframe de selección de modo | 0.75d | 2026-09-18 | 2026-09-21 | 95 | 100% |  | Sarai — Diseñador de interacción UX-XR |
| 98 | 6.5 | IW.3 — Crear wireframe de selección emocional | 0.75d | 2026-09-18 | 2026-09-21 | 63, 95 | 100% |  | Sarai — Diseñador de interacción UX-XR |
| 99 | 6.7 | IW.5 — Crear wireframe de pantalla previa al juego | 0.75d | 2026-09-18 | 2026-09-21 | 95 | 100% |  | Sarai — Diseñador de interacción UX-XR |
| 100 | 6.16 | IG.1 — Diseñar indicadores visuales de Perfect, Good y Miss | 1d | 2026-09-10 | 2026-09-10 | 57 | 100% |  | Sarai — Diseñador de interacción UX-XR |
| 101 | 6.17 | IG.2 — Diseñar representación definitiva de las notas del juego | 2d | 2026-09-11 | 2026-09-15 | 57, 42 | 100% |  | Sarai — Diseñador de interacción UX-XR |
| 102 | 6.18 | IG.3 — Diseñar indicadores para señalar el tambor que debe golpearse | 0.75d | 2026-09-14 | 2026-09-14 | 101 | 100% |  | Sarai — Diseñador de interacción UX-XR |
| 103 | 6.19 | IT.1 — Diseñar tutorial visual sobre cómo sujetar las baquetas | 1d | 2026-09-10 | 2026-09-10 | 9, 11 |  |  | Sarai — Diseñador de interacción UX-XR |
| 104 | 6.20 | IT.2 — Diseñar tutorial para explicar cómo seguir el ritmo | 0d | 2026-09-11 | 2026-09-11 | 45 | 100% | start no later than 2026-09-14 | Sarai — Diseñador de interacción UX-XR |
| 105 | 6.21 | IT.3 — Diseñar tutorial para explicar la intensidad de los golpes | 1d | 2026-09-17 | 2026-09-18 | 19 | 100% |  | Sarai — Diseñador de interacción UX-XR |
| 106 | 6.22 | IT.4 — Implementar flujo del tutorial completo | 2d | 2026-09-18 | 2026-09-22 | 103, 105, 65 | 100% | start no later than 2026-09-18 | Sarai — Diseñador de interacción UX-XR |
| 107 | 6.24 | II.2 — Implementar menú principal dentro de Unity | 0.75d | 2026-09-21 | 2026-09-22 | 57, 97, 98, 64, 95, 99 | 100% |  | Sarai — Diseñador de interacción UX-XR |
| 108 | 6.25 | II.3 — Implementar interacción con botones utilizando controlador VR | 0d | 2026-09-22 | 2026-09-22 | 9, 107 | 100% |  | Sarai — Diseñador de interacción UX-XR |
| 109 | 6.28 | II.6 — Implementar pantalla de resultados | 1.5d | 2026-09-18 | 2026-09-22 | 47, 95, 48 | 100% |  | Sarai — Diseñador de interacción UX-XR |
| 110 | 6.29 | IR.1 — Revisar legibilidad de textos dentro del visor VR | 0.75d | 2026-09-22 | 2026-09-23 | 108 | 100% |  | Sarai — Diseñador de interacción UX-XR |
| 111 | 6.30 | IR.2 — Revisar tamaño, distancia y posición de paneles | 0d | 2026-09-23 | 2026-09-23 | 110 | 100% |  | Sarai — Diseñador de interacción UX-XR |

Notes:
- 84: [HECHA 2026-10-19] Crash y Platillo (ride) con cinco capas de velocidad cada uno, del kit AVL Drumkits Red Zeppelin bajo CC BY-SA 3.0. El crash entro como septima pieza el 19-oct: Assets/Audio/Piezas/Crash.asset y Platillo.asset
- 104: [HECHA 2026-10-20] PasoSeguirPulso con EcoRitmico: 8 notas, 3 aciertos necesarios, ventanas de 25 y 60 ms. Rediseñado como acompañamiento el 20-oct porque la version anterior callaba el metronomo al empezar el turno del usuario y pedia reproducir de memoria: fallaba 0 de 9 corridas. Pruebas en TutorialPasosTests y EcoRitmicoTests
- 105: [HECHA 2026-10-20] PasoIntensidades: exige los tres niveles suave, medio y fuerte, con el umbral de velocidad en cada pad y no global, porque un bombo se golpea mas fuerte que un hi-hat. Assets/Scripts/Tutorial/PasoIntensidades.cs
- 106: [HECHA 2026-10-20] TutorialRunner conduce los cuatro pasos con baqueta fantasma y rotulo, y FlujoApp lo arranca desde el menu y lleva a resultados. RegistroTutorial vuelca a JSON los intentos, el tiempo por paso, el tiempo hasta el primer golpe y el desfase de cada golpe: es la evidencia de la medida de exito 6
- 107: [HECHA 2026-10-20] ConstruirMenu levanta TOCAR, TUTORIAL y SALIR como pads con disco y rotulo, cableando los diez campos de FlujoApp. EscenaCompletaTests comprueba el montaje entero, incluido que el marcador se apague fuera de Tocando
- 108: [HECHA 2026-10-20] Los botones se golpean con las baquetas por el MISMO camino de deteccion que el kit: StickTracker los lleva en su lista y PadDeMenu filtra que el golpe venga de una mano. No hay un segundo mecanismo de entrada que mantener
- 109: [HECHA 2026-10-20] PanelResultados y TextoResultados: el resultado dicho en palabras y no solo en cifras. Pruebas en TextoResultadosTests
- 110: [HECHA 2026-10-20] Tamaños MEDIDOS sobre la escena, no estimados. JudgePopup en 0.00556, que con el factor 36 de TMP da 0.200 de cuerpo, el mismo que el Indicador validado en el visor; el rotulo del tutorial en 0.85, escalado desde el 0.50 validado al pasar de 0.50 m de los ojos a 0.87; marcador e Indicador con autoajuste. LosTamanosDeTextoSonLosValidados los fija, porque tres correcciones seguidas no habian llegado nunca a la escena
- 111: [HECHA 2026-10-20] Tres posiciones corregidas con medida. El panel del marcador se ancla al kit en coordenadas de MUNDO tras encontrarse a dieciseis metros por heredar una posicion local; el rotulo del tutorial pasa del bombo -31 cm fuera del eje, 16 mas alto y 45 cm mas cerca- al punto exacto del marcador; y el promedio que situa el panel deja de contar los botones del menu. Con sus pruebas de escena

| ID | WBS | Task | Type | Duration | Start | Finish | Predecessors | Complete | Constraint | Resources |
| --- | --- | --- | --- | --- | --- | --- | --- | --- | --- | --- |
| 112 | 7 | **A. Entorno 3D y assets** |  | 6.5d | 2026-09-14 | 2026-10-13 |  | 100% |  |  |
| 113 | 7.9 | AA.3 — Buscar assets de entorno compatibles con el estilo elegido |  | 2.38d | 2026-09-14 | 2026-09-16 | 57, 56, 58, 6 | 100% |  | Kimberly — Artista y modelador 3D |
| 114 | 7.10 | AA.4 — Revisar licencias de los assets seleccionados |  | 1.25d | 2026-09-16 | 2026-09-17 | 113 | 100% |  | Kimberly — Artista y modelador 3D |
| 115 | 7.17 | AP.1 — Crear primera composición del escenario en Unity |  | 1.38d | 2026-09-18 | 2026-09-21 | 113, 114 | 100% | start no later than 2026-09-18 | Kimberly — Artista y modelador 3D |
| 116 | 7.20 | AL.1 — Configurar iluminación inicial considerando la paleta de colores establecida |  | 1.12d | 2026-09-23 | 2026-09-24 | 115, 57, 56, 58 | 100% |  | Kimberly — Artista y modelador 3D |
| 117 | 7.21 | AL.2 — Configurar iluminación definitiva y ambiente visual |  | 0.88d | 2026-09-24 | 2026-09-25 | 116 | 100% | start no later than 2026-09-24 | Kimberly — Artista y modelador 3D |
| 118 | 7.24 | AS — Crear límites visuales de seguridad del espacio de interacción |  | 0.5d | 2026-09-21 | 2026-09-22 | 115, 61 | 100% |  | Kimberly — Artista y modelador 3D |
| 119 | 7.29 | AO.5 — Evaluar FPS del escenario en el visor objetivo |  | 1d | 2026-09-25 | 2026-09-28 | 117 | 100% |  | Kimberly — Artista y modelador 3D |
| 120 | 8 | **Q. QA, documentación y gestión** |  | 17d | 2026-09-07 | 2026-10-21 |  | 43% |  |  |
| 121 | 8.1 | QP.1 — Definir alcance general del proyecto |  | 1d | 2026-09-07 | 2026-09-07 |  | 100% |  | Diana — Gerente de proyecto |
| 122 | 8.2 | QP.2 — Definir objetivos generales y específicos |  | 1d | 2026-09-08 | 2026-09-08 | 121 | 100% |  | Diana — Gerente de proyecto |
| 123 | 8.3 | QP.3 — Identificar entregables principales del proyecto |  | 0.38d | 2026-09-09 | 2026-09-09 | 121, 122 | 100% |  | Diana — Gerente de proyecto |
| 124 | 8.4 | QP.4 — Elaborar EDT/WBS completa de tareas |  | 2d | 2026-09-09 | 2026-09-11 | 123 | 100% |  | Diana — Gerente de proyecto |
| 125 | 8.5 | QP.5 — Asignar responsables principales para cada tarea |  | 0.75d | 2026-09-11 | 2026-09-11 | 124 | 100% |  | Diana — Gerente de proyecto |
| 126 | 8.6 | QP.6 — Establecer dependencias entre tareas |  | 0.75d | 2026-09-11 | 2026-09-11 | 124 | 100% |  | Diana — Gerente de proyecto |
| 127 | 8.7 | QP.7 — Crear cronograma inicial del proyecto |  | 0.75d | 2026-09-11 | 2026-09-14 | 124, 126, 125 | 100% |  | Diana — Gerente de proyecto |
| 128 | 8.8 | QP.8 — Crear diagrama de Gantt |  | 0.75d | 2026-09-14 | 2026-09-15 | 127 | 100% |  | Diana — Gerente de proyecto |
| 129 | 8.9 | QP.9 — Identificar ruta crítica del proyecto |  | 1d | 2026-09-15 | 2026-09-16 | 128 | 100% |  | Diana — Gerente de proyecto |
| 130 | 8.10 | QG.1 — Crear lista de riesgos técnicos, académicos y de tiempo |  | 0.75d | 2026-09-16 | 2026-09-16 | 127, 129 | 100% |  | Diana — Gerente de proyecto |
| 131 | 8.11 | QG.2 — Definir acciones de mitigación para cada riesgo |  | 0.5d | 2026-09-16 | 2026-09-17 | 130 |  |  | Diana — Gerente de proyecto |
| 132 | 8.12 | QR.1 — Definir requisitos funcionales de la simulación |  | 2d | 2026-09-08 | 2026-09-09 | 121 | 100% |  | Diana — Analista e investigador |
| 133 | 8.13 | QR.2 — Definir requisitos no funcionales |  | 1d | 2026-09-10 | 2026-09-10 | 132 | 100% |  | Diana — Analista e investigador |
| 134 | 8.14 | QR.3 — Crear criterios de aceptación para cada requisito |  | 2d | 2026-09-11 | 2026-09-14 | 132, 133 | 100% |  | Diana — Analista e investigador |
| 135 | 8.15 | QR.4 — Crear matriz de trazabilidad entre requisitos y funcionalidades |  | 1d | 2026-09-15 | 2026-09-15 | 134 | 100% |  | Diana — Analista e investigador |
| 136 | 8.16 | QE.1 — Establecer formato para documentar errores |  | 0.38d | 2026-09-07 | 2026-09-07 |  | 100% |  | Diana — Analista de pruebas (QA) |
| 137 | 8.17 | QT.1 — Crear plan de pruebas de batería VR |  | 1d | 2026-09-16 | 2026-09-16 | 14, 135 |  |  | Diana — Analista de pruebas (QA) |
| 138 | 8.22 | QT.6 — Realizar pruebas unitarias de batería |  | 1d | 2026-09-21 | 2026-09-22 | 29, 137 | 100% |  | Diana — Analista de pruebas (QA) |
| 139 | 8.23 | QT.7 — Realizar pruebas del sistema de ritmo |  | 0d | 2026-09-22 | 2026-09-22 | 76, 47, 96, 66, 106, 38, 43, 49, 18, 45, 100, 79, 41, 33, 135 | 100% |  | Diana — Analista de pruebas (QA) |
| 140 | 8.24 | QT.8 — Realizar pruebas con usuarios del prototipo integrado |  | 2d | 2026-09-07 | 2026-09-08 |  |  |  | Diana — Analista de pruebas (QA) |
| 141 | 8.25 | QE.2 — Registrar errores, observaciones y sugerencias de usuarios |  | 1d | 2026-09-09 | 2026-09-09 | 140, 136 |  |  | Diana — Analista de pruebas (QA) |
| 142 | 8.26 | QE.3 — Clasificar errores por gravedad y prioridad |  | 0d | 2026-09-09 | 2026-09-09 | 141 |  |  | Diana — Analista de pruebas (QA) |
| 143 | 8.27 | QE.4 — Asignar errores a las áreas correspondientes |  | 0d | 2026-09-09 | 2026-09-09 | 142 |  |  | Diana — Analista de pruebas (QA) |
| 144 | 8.28 | QE.5 — Verificar corrección de errores críticos |  | 0.38d | 2026-09-10 | 2026-09-10 | 143, 140 |  |  | Diana — Analista de pruebas (QA) |
| 145 | 8.29 | QV.1 — Realizar prueba completa desde inicio hasta final de una sesión |  | 0.75d | 2026-09-10 | 2026-09-11 | 144 |  |  | Diana — Analista de pruebas (QA) |
| 146 | 8.30 | QV.2 — Evaluar estabilidad y presencia de cierres inesperados |  | 0.12d | 2026-09-11 | 2026-09-11 | 145 |  |  | Diana — Analista de pruebas (QA) |
| 147 | 8.31 | QV.3 — Medir FPS del proyecto en el visor objetivo |  | 0.62d | 2026-09-25 | 2026-09-25 | 117, 145 | 100% |  | Diana — Analista de pruebas (QA) |
| 148 | 8.32 | QV.4 — Evaluar latencia entre golpe físico, sonido y detección |  | 1d | 2026-09-22 | 2026-09-23 | 30, 92, 49 | 100% |  | Diana — Analista de pruebas (QA) |
| 149 | 8.33 | QV.5 — Evaluar comodidad de la experiencia VR |  | 1d | 2026-09-09 | 2026-09-09 | 140 |  |  | Diana — Analista de pruebas (QA) |
| 150 | 8.34 | QC.1 — Registrar versiones importantes del proyecto | milestone | 0d | 2026-09-07 | 2026-09-07 | 3 |  |  | Diana — Gerente de proyecto |
| 151 | 8.35 | QC.2 — Documentar avances semanales |  | 0.38d | 2026-09-07 | 2026-09-07 |  | 100% |  | Diana — Gerente de proyecto |
| 152 | 8.36 | QC.3 — Mantener actualizada la bibliografía del proyecto |  | 0.38d | 2026-09-09 | 2026-09-09 | 53 | 100% |  | Diana — Gerente de proyecto |
| 153 | 8.37 | QC.4 — Mantener registro de assets y sus licencias |  | 0d | 2026-09-08 | 2026-09-08 | 6 | 100% |  | Diana — Gerente de proyecto |
| 154 | 8.38 | QC.5 — Mantener registro de música y licencias utilizadas |  | 0d | 2026-09-08 | 2026-09-08 | 72 | 100% |  | Diana — Gerente de proyecto |
| 155 | 8.47 | QM.1 — Elaborar manual básico de usuario |  | 1.12d | 2026-09-11 | 2026-09-14 | 145 |  |  | Diana — Redactor técnico |
| 156 | 8.48 | QM.2 — Elaborar manual técnico de instalación y ejecución |  | 0.12d | 2026-09-11 | 2026-09-11 | 145 |  |  | Diana — Redactor técnico |
| 157 | 8.51 | QI.1 — Analizar resultados obtenidos durante las pruebas |  | 2d | 2026-09-10 | 2026-09-11 | 140, 141 |  |  | Diana — Analista e investigador |
| 158 | 8.52 | QI.2 — Redactar apartado de resultados del proyecto |  | 2d | 2026-09-14 | 2026-09-15 | 157 |  |  | Diana — Analista e investigador |
| 159 | 8.53 | QI.3 — Redactar conclusiones y limitaciones |  | 1d | 2026-09-16 | 2026-09-16 | 158 |  |  | Diana — Analista e investigador |
| 160 | 8.54 | QI.4 — Integrar todas las secciones del informe final |  | 2.5d | 2026-09-28 | 2026-09-30 | 68, 23, 76, 47, 96, 66, 106, 38, 43, 49, 18, 45, 100, 79, 41, 158, 159, 69, 131, 151, 95, 90, 119, 77, 111 |  | start no later than 2026-09-28 | Diana — Analista e investigador |
| 161 | 8.55 | QI.5 — Revisar redacción, ortografía, referencias y formato |  | 2.38d | 2026-10-01 | 2026-10-05 | 160, 152, 153, 154 |  |  | Diana — Analista e investigador |
| 162 | 8.56 | QB.1 — Generar build candidata a versión final |  | 1.38d | 2026-09-28 | 2026-09-29 | 144, 146, 147, 148, 149, 150 |  | start no later than 2026-09-28 | Diana — Desarrollador de realidad virtual |
| 163 | 8.57 | QB.2 — Probar build final en el visor VR objetivo |  | 1d | 2026-09-29 | 2026-09-30 | 162 |  | start no later than 2026-09-29 | Diana — Desarrollador de realidad virtual |
| 164 | 8.58 | QB.3 — Corregir errores críticos encontrados en build final |  | 0.12d | 2026-09-30 | 2026-09-30 | 163 |  | start no later than 2026-09-30 | Diana — Desarrollador de realidad virtual |
| 165 | 8.59 | QB.4 — Generar versión definitiva del videojuego |  | 0d | 2026-09-30 | 2026-09-30 | 164 |  | start no later than 2026-10-01 | Diana — Desarrollador de realidad virtual |
| 166 | 8.60 | QX — Preparar presentación y demostración final del proyecto |  | 1.88d | 2026-10-05 | 2026-10-06 | 160, 165, 155, 156, 145, 161 |  | start no later than 2026-10-15 | Diana — Director de proyecto |

Notes:
- 113: [HECHA 2026-10-18] Assets elegidos y copiados: Stage y Stadium Seats de Poly Pizza, skybox de Kenney, arbol y textura de tierra de Fantasy Forest
- 114: [HECHA 2026-10-18] Licencia de cada asset verificada en su pagina de origen. Dos regimenes distintos: CC0/CC BY 3.0 y Standard Unity Asset Store EULA
- 115: [HECHA 2026-10-18] Escena compuesta por script: Assets/Editor/ConstruirBosque.cs. Claro de bosque con 20 arboles en tres anillos y suelo texturizado
- 117: [HECHA 2026-10-18] Iluminacion y ambiente definidos: sol bajo calido o luna rasante, ambiente de tres tonos, niebla exponencial y sombras suaves
- 118: [HECHA 2026-10-18] LimiteSeguro dibuja el perimetro del espacio con radio calculado del pad mas lejano mas 0.5 m de margen. Verificado en el visor durante la corrida de FPS del 18-oct: el circulo se ve y el radio se siente adecuado. La medida 10 habla de lo que reportan los usuarios, asi que se cierra con observacion, no con un numero del sistema
- 119: [HECHA 2026-10-18] Medido en el visor sobre el entorno definitivo: 12949 fotogramas, 12946 en vsync (100.0 %), 3 vsync perdidos (0.02 %) contra un criterio del 5 %. Evidencia en entregables/mediciones/fps_20261018_060703.json
- 138: [HECHA 2026-10-17] 42 pruebas EditMode de bateria: CrossSolver 7, DrumPad 6, PadVisual 7, SampleSelector 8, HitIntensity 5, KitLayout 4, DrumHitFanout 2, EscenaRig 3
- 139: [HECHA 2026-10-17] 52 pruebas EditMode de ritmo: SessionStats 11, MusicalTime 8, TempoMap 8, HitJudge 7, HitRing 6, NoteMatcher 6, JuegoDeRitmo 6
- 147: [HECHA 2026-10-18] Misma corrida que AO.5, desde QA. 71.9 fps de media, mediana y p99 en 13.9 ms, que es el intervalo exacto de vsync a 72 Hz
- 148: [HECHA 2026-10-17] Hito Go/No-Go del acta, medido con el protocolo del clic fisico: p90 de +4.07 ms dentro de la ventana de -10 a +25 ms. Ocho corridas en entregables/mediciones/latencia_20261017_*.json. El desfase negativo es valido: la prediccion del plano armado adelanta el sonido
- 153: [HECHA 2026-10-18] Registro de assets y licencias en Assets/Entorno/ATRIBUCION.txt y entregables/ATRIBUCION_entorno.txt, con las restricciones de cada EULA
